# Entregable 6 - Cronograma del Proyecto

Schedule from MS Project, 2026-06-08 to 2026-09-09, costs in ₡.

## Calendars

- Estándar: Mon-Fri 09:00-13:00, 15:00-19:00; Sat-Sun off.

## Resources

| Resource | Group |
| --- | --- |
| Tamara Robles Camacho | Gestión |
| Isaac Jiménez Blanco | Documentación |
| Mauricio González Prendas | Desarrollo y QA |
| Jorge Abarca Quiros | Documentación |
| Carlos Sainz Arce | Desarrollo y QA |
| Software y herramientas | Herramientas |
| Hosting / infraestructura | Infraestructura |
| Hardware y materiales | Materiales |
| Servicios operativos | Servicios |
| Contingencia | Reserva |

## Schedule

| ID | WBS | Task | Type | Duration | Start | Finish | Predecessors | Baseline start | Baseline finish | Baseline duration | Total slack | Free slack | Resources | Work | Cost | Baseline cost |
| --- | --- | --- | --- | --- | --- | --- | --- | --- | --- | --- | --- | --- | --- | --- | --- | --- |
| 1 | 1 | **Inicio** |  | 9d | 2026-06-08 | 2026-06-18 |  | 2026-06-08 | 2026-06-18 | 9d | 0d |  |  | 224h | 1,886,667 | 1,886,667 |
| 2 | 1.1 | Aprobar Business Case |  | 5d | 2026-06-08 | 2026-06-12 |  | 2026-06-08 | 2026-06-12 | 5d | 59d | 0d | Isaac Jiménez Blanco; Tamara Robles Camacho | 80h | 850,000 | 850,000 |
| 3 | 1.2 | Elaborar Project Charter |  | 5d | 2026-06-08 | 2026-06-12 |  | 2026-06-08 | 2026-06-12 | 5d | 0d |  | Isaac Jiménez Blanco; Tamara Robles Camacho | 80h | 600,000 | 600,000 |
| 4 | 1.3 | Hito: Project Charter aprobado | milestone | 0d | 2026-06-12 | 2026-06-12 | 3 | 2026-06-12 | 2026-06-12 | 0d | 0d |  | Tamara Robles Camacho |  |  |  |
| 5 | 1.4 | Registrar Stakeholders |  | 4d | 2026-06-15 | 2026-06-18 | 2 | 2026-06-15 | 2026-06-18 | 4d | 59d |  | Isaac Jiménez Blanco; Tamara Robles Camacho | 64h | 436,667 | 436,667 |
| 6 | 2 | **Planificación** |  | 20d | 2026-06-15 | 2026-07-10 |  | 2026-06-15 | 2026-07-10 | 20d | 0d |  |  | 832h | 3,686,667 | 3,686,667 |
| 7 | 2.1 | Definir alcance del proyecto |  | 5d | 2026-06-15 | 2026-06-19 | 4 | 2026-06-15 | 2026-06-19 | 5d | 0d |  | Isaac Jiménez Blanco; Jorge Abarca Quiros | 80h | 350,000 | 350,000 |
| 8 | 2.2 | Hito: Alcance definido | milestone | 0d | 2026-06-19 | 2026-06-19 | 7 | 2026-06-19 | 2026-06-19 | 0d | 0d |  | Isaac Jiménez Blanco; Jorge Abarca Quiros |  |  |  |
| 9 | 2.3 | Elaborar WBS |  | 5d | 2026-06-22 | 2026-06-26 | 7 | 2026-06-22 | 2026-06-26 | 5d | 28d | 0d | Jorge Abarca Quiros; Isaac Jiménez Blanco | 80h | 450,000 | 450,000 |
| 10 | 2.4 | Crear cronograma del proyecto |  | 5d | 2026-06-29 | 2026-07-03 | 9 | 2026-06-29 | 2026-07-03 | 5d | 28d | 0d | Isaac Jiménez Blanco; Jorge Abarca Quiros | 80h | 600,000 | 600,000 |
| 11 | 2.5 | Hito: Cronograma aprobado | milestone | 0d | 2026-07-03 | 2026-07-03 | 10 | 2026-07-03 | 2026-07-03 | 0d | 48d |  | Isaac Jiménez Blanco |  |  |  |
| 12 | 2.6 | Elaborar matriz RACI |  | 3d | 2026-06-22 | 2026-06-24 | 7 | 2026-06-22 | 2026-06-24 | 3d | 43d | 0d | Isaac Jiménez Blanco; Jorge Abarca Quiros | 48h | 150,000 | 150,000 |
| 13 | 2.7 | Crear organigrama del proyecto |  | 3d | 2026-06-25 | 2026-06-29 | 12 | 2026-06-25 | 2026-06-29 | 3d | 48d | 0d | Isaac Jiménez Blanco; Jorge Abarca Quiros | 48h | 120,000 | 120,000 |
| 14 | 2.8 | Elaborar plan de recursos |  | 4d | 2026-06-25 | 2026-06-30 | 12 | 2026-06-25 | 2026-06-30 | 4d | 43d | 0d | Isaac Jiménez Blanco; Jorge Abarca Quiros | 64h | 250,000 | 250,000 |
| 15 | 2.9 | Estimar costos del proyecto |  | 5d | 2026-07-01 | 2026-07-07 | 14 | 2026-07-01 | 2026-07-07 | 5d | 43d | 0d | Isaac Jiménez Blanco; Jorge Abarca Quiros | 80h | 300,000 | 300,000 |
| 16 | 2.10 | Elaborar plan de calidad |  | 4d | 2026-06-22 | 2026-06-25 | 7 | 2026-06-22 | 2026-06-25 | 4d | 28d | 0d | Isaac Jiménez Blanco; Jorge Abarca Quiros | 64h | 300,000 | 300,000 |
| 17 | 2.11 | Elaborar plan de comunicaciones |  | 4d | 2026-06-30 | 2026-07-03 | 13 | 2026-06-30 | 2026-07-03 | 4d | 48d |  | Isaac Jiménez Blanco; Jorge Abarca Quiros | 64h | 250,000 | 250,000 |
| 18 | 2.12 | Elaborar plan de gestión de riesgos |  | 4d | 2026-06-22 | 2026-06-25 | 7 | 2026-06-22 | 2026-06-25 | 4d | 47d | 0d | Isaac Jiménez Blanco; Jorge Abarca Quiros | 64h | 250,000 | 250,000 |
| 19 | 2.13 | Crear registro de riesgos |  | 4d | 2026-06-26 | 2026-07-01 | 18 | 2026-06-26 | 2026-07-01 | 4d | 47d | 0d | Isaac Jiménez Blanco; Jorge Abarca Quiros | 64h | 250,000 | 250,000 |
| 20 | 2.14 | Hito: Registro de riesgos completado | milestone | 0d | 2026-07-01 | 2026-07-01 | 19 | 2026-07-01 | 2026-07-01 | 0d | 50d |  | Isaac Jiménez Blanco |  |  |  |
| 21 | 2.15 | Crear matriz de probabilidad e impacto |  | 3d | 2026-07-02 | 2026-07-06 | 19 | 2026-07-02 | 2026-07-06 | 3d | 47d |  | Isaac Jiménez Blanco; Jorge Abarca Quiros | 48h | 216,667 | 216,667 |
| 22 | 2.16 | Elaborar plan de adquisiciones |  | 3d | 2026-07-08 | 2026-07-10 | 15 | 2026-07-08 | 2026-07-10 | 3d | 43d |  | Isaac Jiménez Blanco; Jorge Abarca Quiros | 48h | 200,000 | 200,000 |
| 23 | 3 | **Ejecución** |  | 48d | 2026-06-22 | 2026-08-26 |  | 2026-06-22 | 2026-08-26 | 48d | 0d |  |  | 608h | 7,010,000 | 7,010,000 |
| 24 | 3.1 | **Ejecución - Desarrollo Front-End** |  | 48d | 2026-06-22 | 2026-08-26 |  | 2026-06-22 | 2026-08-26 | 48d | 0d |  |  | 608h | 7,010,000 | 7,010,000 |
| 25 | 3.1.1 | Login y Dashboard principal |  | 5d | 2026-06-22 | 2026-06-26 | 8 | 2026-06-22 | 2026-06-26 | 5d | 0d |  | Carlos Sainz Arce; Mauricio González Prendas | 80h | 686,667 | 686,667 |
| 26 | 3.1.2 | Portal Estudiantil - Matrícula y horarios |  | 8d | 2026-06-29 | 2026-07-08 | 25 | 2026-06-29 | 2026-07-08 | 8d | 0d |  | Mauricio González Prendas | 64h | 918,333 | 918,333 |
| 27 | 3.1.3 | Portal Estudiantil - Calificaciones e historial |  | 6d | 2026-07-09 | 2026-07-16 | 26 | 2026-07-09 | 2026-07-16 | 6d | 0d |  | Mauricio González Prendas | 48h | 685,000 | 685,000 |
| 28 | 3.1.4 | Portal Docente - Gestión de cursos y asistencia |  | 6d | 2026-07-17 | 2026-07-24 | 27 | 2026-07-17 | 2026-07-24 | 6d | 0d |  | Mauricio González Prendas | 48h | 710,000 | 710,000 |
| 29 | 3.1.5 | Portal Docente - Registro de calificaciones |  | 5d | 2026-07-27 | 2026-07-31 | 28 | 2026-07-27 | 2026-07-31 | 5d | 0d |  | Mauricio González Prendas | 40h | 506,667 | 506,667 |
| 30 | 3.1.6 | Portal Administrativo - CRUD completo |  | 8d | 2026-08-03 | 2026-08-12 | 29 | 2026-08-03 | 2026-08-12 | 8d | 0d |  | Mauricio González Prendas | 64h | 920,000 | 920,000 |
| 31 | 3.1.7 | Portal Financiero - Pagos e historial |  | 7d | 2026-06-29 | 2026-07-07 | 25 | 2026-06-29 | 2026-07-07 | 7d | 20d | 0d | Carlos Sainz Arce | 56h | 706,667 | 706,667 |
| 32 | 3.1.8 | Dashboard Ejecutivo del sistema |  | 6d | 2026-07-08 | 2026-07-15 | 31 | 2026-07-08 | 2026-07-15 | 6d | 20d |  | Carlos Sainz Arce | 48h | 666,667 | 666,667 |
| 33 | 3.1.9 | Integración entre módulos y navegación |  | 5d | 2026-08-13 | 2026-08-19 | 30, 32 | 2026-08-13 | 2026-08-19 | 5d | 0d |  | Carlos Sainz Arce; Mauricio González Prendas | 80h | 496,667 | 496,667 |
| 34 | 3.1.10 | Pruebas de usabilidad y QA |  | 5d | 2026-08-20 | 2026-08-26 | 33 | 2026-08-20 | 2026-08-26 | 5d | 0d |  | Carlos Sainz Arce; Mauricio González Prendas | 80h | 713,332 | 713,332 |
| 35 | 3.1.11 | Hito: Prototipo Front-End completado | milestone | 0d | 2026-08-26 | 2026-08-26 | 34 | 2026-08-26 | 2026-08-26 | 0d | 0d |  | Carlos Sainz Arce; Mauricio González Prendas |  |  |  |

| ID | WBS | Task | Type | Duration | Start | Finish | Predecessors | Baseline start | Baseline finish | Baseline duration | Total slack | Free slack | Resources | Work | Cost | Baseline cost |
| --- | --- | --- | --- | --- | --- | --- | --- | --- | --- | --- | --- | --- | --- | --- | --- | --- |
| 36 | 4 | **Supervisión y control** |  | 16d | 2026-06-26 | 2026-07-17 |  | 2026-06-26 | 2026-07-17 | 16d | 28d |  |  | 384h | 2,271,667 | 2,271,667 |
| 37 | 4.1 | Definir KPIs del proyecto |  | 5d | 2026-07-06 | 2026-07-10 | 10 | 2026-07-06 | 2026-07-10 | 5d | 28d | 0d | Jorge Abarca Quiros; Tamara Robles Camacho | 80h | 400,000 | 400,000 |
| 38 | 4.2 | Diseñar proceso de control de cambios |  | 4d | 2026-06-26 | 2026-07-01 | 16 | 2026-06-26 | 2026-07-01 | 4d | 28d | 0d | Isaac Jiménez Blanco; Tamara Robles Camacho | 64h | 350,000 | 350,000 |
| 39 | 4.3 | Elaborar solicitud de cambio 1 |  | 3d | 2026-07-02 | 2026-07-06 | 38 | 2026-07-02 | 2026-07-06 | 3d | 28d | 0d | Jorge Abarca Quiros; Tamara Robles Camacho | 48h | 250,000 | 250,000 |
| 40 | 4.4 | Elaborar solicitud de cambio 2 |  | 3d | 2026-07-02 | 2026-07-06 | 38 | 2026-07-02 | 2026-07-06 | 3d | 28d | 0d | Jorge Abarca Quiros; Tamara Robles Camacho | 48h | 250,000 | 250,000 |
| 41 | 4.5 | Evaluar cambios solicitados |  | 4d | 2026-07-07 | 2026-07-10 | 39, 40 | 2026-07-07 | 2026-07-10 | 4d | 28d | 0d | Isaac Jiménez Blanco; Jorge Abarca Quiros | 64h | 350,000 | 350,000 |
| 42 | 4.6 | Hito: Cambios evaluados | milestone | 0d | 2026-07-10 | 2026-07-10 | 41 | 2026-07-10 | 2026-07-10 | 0d | 28d | 0d | Tamara Robles Camacho |  |  |  |
| 43 | 4.7 | Crear dashboard ejecutivo del proyecto |  | 5d | 2026-07-13 | 2026-07-17 | 37, 42 | 2026-07-13 | 2026-07-17 | 5d | 28d |  | Jorge Abarca Quiros; Tamara Robles Camacho | 80h | 671,667 | 671,667 |
| 44 | 5 | **Cierre** |  | 10d | 2026-08-27 | 2026-09-09 |  | 2026-08-27 | 2026-09-09 | 10d | 0d |  |  | 352h | 588,333 | 588,333 |
| 45 | 5.1 | Elaborar informe ejecutivo |  | 4d | 2026-08-27 | 2026-09-01 | 35, 42, 43 | 2026-08-27 | 2026-09-01 | 4d | 0d |  | Jorge Abarca Quiros; Tamara Robles Camacho | 64h | 211,667 | 211,667 |
| 46 | 5.2 | Elaborar acta de cierre |  | 3d | 2026-09-02 | 2026-09-04 | 45 | 2026-09-02 | 2026-09-04 | 3d | 0d |  | Isaac Jiménez Blanco; Tamara Robles Camacho | 48h | 150,000 | 150,000 |
| 47 | 5.3 | Elaborar reflexiones y recomendaciones |  | 3d | 2026-09-02 | 2026-09-04 | 45 | 2026-09-02 | 2026-09-04 | 3d | 0d |  | Carlos Sainz Arce; Isaac Jiménez Blanco; Jorge Abarca Quiros; Mauricio González Prendas; Tamara Robles Camacho | 120h | 126,666 | 126,666 |
| 48 | 5.4 | Revisión final e integración de entrega |  | 3d | 2026-09-07 | 2026-09-09 | 46, 47 | 2026-09-07 | 2026-09-09 | 3d | 0d |  | Mauricio González Prendas; Tamara Robles Camacho; Carlos Sainz Arce; Isaac Jiménez Blanco; Jorge Abarca Quiros | 120h | 100,000 | 100,000 |
| 49 | 5.5 | Hito: Entrega final del proyecto | milestone | 0d | 2026-09-09 | 2026-09-09 | 48 | 2026-09-09 | 2026-09-09 | 0d | 0d |  | Tamara Robles Camacho |  |  |  |
| 50 | 6 | **Rubros adicionales y contingencia** |  | 1d | 2026-06-08 | 2026-06-08 |  | 2026-06-08 | 2026-06-08 | 1d | 67d |  |  |  | 2,181,866 | 2,181,866 |
| 51 | 6.1 | Software y herramientas |  | 1d | 2026-06-08 | 2026-06-08 |  | 2026-06-08 | 2026-06-08 | 1d | 67d |  |  |  | 221,667 | 221,667 |
| 52 | 6.2 | Hardware y materiales |  | 1d | 2026-06-08 | 2026-06-08 |  | 2026-06-08 | 2026-06-08 | 1d | 67d |  |  |  | 33,333 | 33,333 |
| 53 | 6.3 | Servicios operativos |  | 1d | 2026-06-08 | 2026-06-08 |  | 2026-06-08 | 2026-06-08 | 1d | 67d |  |  |  | 411,000 | 411,000 |
| 54 | 6.4 | Reserva para contingencias |  | 1d | 2026-06-08 | 2026-06-08 |  | 2026-06-08 | 2026-06-08 | 1d | 67d |  |  |  | 1,515,866 | 1,515,866 |
